# Hospital Finder Project

How a schedule from MS Project changed from version to version. A marks actual dates.

## Version 1 (saved 2014-06-09)

Note of the change: [vietlp] Update tasksheet for week 5 and 6.

| ID | WBS | Task | Duration | Start | Finish | Predecessors | Total float | Constraint |
| --- | --- | --- | --- | --- | --- | --- | --- | --- |
| 1 | 1 | **Analyze business and investigate technology** | 6d | 2014-05-19 08:00 | 2014-05-26 17:00 |  |  |  |
| 2 |  | Determine project scope | 1d | 2014-05-19 08:00 | 2014-05-19 17:00 |  | 0d |  |
| 3 |  | Create general use case diagram | 1d | 2014-05-20 08:00 | 2014-05-20 17:00 | 2 | 0d |  |
| 4 |  | Create report 2 | 1d | 2014-05-20 08:00 | 2014-05-20 17:00 | 2 | 4d |  |
| 5 |  | Research responsive web layout | 1d | 2014-05-20 08:00 | 2014-05-20 17:00 | 2 | 4d |  |
| 6 |  | Create ERD | 2d | 2014-05-21 08:00 | 2014-05-22 17:00 | 3 | 0d |  |
| 7 |  | Research Google API | 2d | 2014-05-21 08:00 | 2014-05-22 17:00 | 3 | 2d |  |
| 8 |  | Research Facebook API | 2d | 2014-05-21 08:00 | 2014-05-22 17:00 | 3 | 2d |  |
| 9 |  | Research search and word break down algorithm | 2d | 2014-05-23 08:00 | 2014-05-26 17:00 | 6 | 0d |  |
| 10 | 2 | **Use case specification** | 4d | 2014-05-27 08:00 | 2014-05-30 17:00 |  |  |  |
| 11 |  | Login | 2.5h | 2014-05-27 08:00 | 2014-05-27 10:30 | 9 | 3.06d |  |
| 12 |  | Change password | 2.5h | 2014-05-27 10:30 | 2014-05-27 14:00 | 11 | 3.06d |  |
| 13 |  | Reclaim forgot password | 2.5h | 2014-05-27 14:00 | 2014-05-27 16:30 | 12 | 3.06d |  |
| 14 |  | Create hospital users' account | 4h | 2014-05-27 13:00 | 2014-05-27 17:00 | 9 | 54d | finish no earlier than 2014-05-27 17:00 |
| 15 |  | Update hospital users's account | 4h | 2014-05-27 08:00 | 2014-05-27 12:00 |  | 51.56d | start no earlier than 2014-05-27 08:00 |
| 16 |  | Deactivate normal or hospital users' accounts | 2.5h | 2014-05-27 08:00 | 2014-05-27 10:30 | 9 | 3.06d |  |
| 17 |  | View list of users or hospital users | 2.5h | 2014-05-27 10:30 | 2014-05-27 14:00 | 16 | 3.06d |  |
| 18 |  | View hospitals or clinics information | 2.5h | 2014-05-27 14:00 | 2014-05-27 16:30 | 17 | 3.06d |  |
| 19 |  | Update hospitals or clinics information | 2.5h | 2014-05-27 08:00 | 2014-05-27 10:30 | 9 | 3.06d |  |
| 20 |  | Comment | 2.5h | 2014-05-27 10:30 | 2014-05-27 14:00 | 19 | 3.06d |  |
| 21 |  | Reply comment | 2.5h | 2014-05-27 14:00 | 2014-05-27 16:30 | 20 | 3.06d |  |
| 22 |  | Rating | 2.5h | 2014-05-28 08:00 | 2014-05-28 10:30 | 15 | 51.06d | start no earlier than 2014-05-28 08:00 |
| 23 |  | Create feedback | 2.5h | 2014-05-28 10:30 | 2014-05-28 14:00 | 22 | 51.06d | start no earlier than 2014-05-28 08:00 |
| 24 |  | View list of feedbacks | 2.5h | 2014-05-28 14:00 | 2014-05-28 16:30 | 23 | 51.06d | start no earlier than 2014-05-28 08:00 |
| 25 |  | Import list of hospitals or clinics by Excel | 2.5h | 2014-05-28 08:00 | 2014-05-28 10:30 | 13 | 51.38d | start no earlier than 2014-05-28 08:00 |
| 26 |  | Create appointments online | 2.5h | 2014-05-28 10:30 | 2014-05-28 14:00 | 25 | 51.38d | start no earlier than 2014-05-28 08:00 |
| 27 |  | View list of appointments | 2.5h | 2014-05-28 08:00 | 2014-05-28 10:30 | 18 | 53.06d | start no earlier than 2014-05-28 08:00 |
| 28 |  | View administrator statistics | 2.5h | 2014-05-28 10:30 | 2014-05-28 14:00 | 27 | 53.06d | start no earlier than 2014-05-28 08:00 |
| 29 |  | View hospital statistics | 2.5h | 2014-05-28 14:00 | 2014-05-28 16:30 | 28 | 53.06d | start no earlier than 2014-05-28 08:00 |
| 30 |  | Create class diagram | 1d | 2014-05-28 08:00 | 2014-05-28 17:00 | 21 | 51d | start no earlier than 2014-05-28 08:00 |
| 31 |  | Review and update use case | 1d | 2014-05-29 08:00 | 2014-05-29 17:00 | 26, 24, 30, 18 | 51d | start no earlier than 2014-05-29 08:00 |
| 32 |  | Create architecture diagram | 1d | 2014-05-30 08:00 | 2014-05-30 17:00 | 31 | 51d | start no earlier than 2014-05-30 08:00 |
| 33 |  | Create report 3 | 1d | 2014-05-30 08:00 | 2014-05-30 17:00 | 31 | 51d | start no earlier than 2014-05-30 08:00 |
| 34 |  | Create website layout | 1d | 2014-05-30 08:00 | 2014-05-30 17:00 | 31 | 51d | start no earlier than 2014-05-30 08:00 |
| 35 | 3 | **Sequence diagrams specification** | 5d | 2014-06-09 08:00 | 2014-06-13 17:00 |  |  |  |
| 36 |  | Study User Control, javascript, css | 1d | 2014-06-09 08:00 | 2014-06-09 17:00 |  | 2d |  |
| 37 |  | Create web user interface | 1d | 2014-06-10 08:00 | 2014-06-10 17:00 | 36 | 2.25d |  |
| 38 |  | Review web user interface | 3h | 2014-06-10 08:00 | 2014-06-10 11:00 | 36 | 44.62d | start no earlier than 2014-06-10 08:00 |
| 39 |  | Login | 1h | 2014-06-10 11:00 | 2014-06-10 12:00 | 38 | 3d | start no earlier than 2014-06-10 08:00 |
| 40 |  | Change password | 1h | 2014-06-10 13:00 | 2014-06-10 14:00 | 39 | 3d |  |
| 41 |  | Reclaim forgot password | 1h | 2014-06-10 14:00 | 2014-06-10 15:00 | 40 | 3d |  |
| 42 |  | Create hospital users' account | 1h | 2014-06-10 15:00 | 2014-06-10 16:00 | 41 | 3d |  |
| 43 |  | Update hospital users's account | 1h | 2014-06-10 16:00 | 2014-06-10 17:00 | 42 | 3d |  |
| 44 |  | Review web user interface | 2h | 2014-06-10 08:00 | 2014-06-10 10:00 | 36 | 2.75d | start no earlier than 2014-06-10 08:00 |
| 45 |  | Deactivate normal or hospital users' accounts | 1h | 2014-06-10 10:00 | 2014-06-10 11:00 | 44 | 2.75d | start no earlier than 2014-06-10 08:00 |
| 46 |  | View list of users or hospital users | 1h | 2014-06-10 11:00 | 2014-06-10 12:00 | 45 | 2.75d |  |
| 47 |  | View hospitals or clinics information | 1h | 2014-06-10 13:00 | 2014-06-10 14:00 | 46 | 2.75d |  |
| 48 |  | Update hospitals or clinics information | 1h | 2014-06-10 14:00 | 2014-06-10 15:00 | 47 | 2.75d |  |
| 49 |  | Comment | 1h | 2014-06-10 15:00 | 2014-06-10 16:00 | 48 | 2.75d |  |
| 50 |  | Reply comment | 1h | 2014-06-10 16:00 | 2014-06-10 17:00 | 49 | 2.75d | finish no earlier than 2014-06-02 17:00 |
| 51 |  | Review web user interface | 2h | 2014-06-11 08:00 | 2014-06-11 10:00 | 50 | 2.75d |  |
| 52 |  | Rating | 1.5h | 2014-06-11 08:00 | 2014-06-11 09:30 | 37 | 2.25d | start no earlier than 2014-06-11 08:00 |
| 53 |  | Create feedback | 1.5h | 2014-06-11 09:30 | 2014-06-11 11:00 | 52 | 2.25d |  |
| 54 |  | View list of feedbacks | 1.5h | 2014-06-11 11:00 | 2014-06-11 13:30 | 53 | 2.25d |  |
| 55 |  | Import list of hospitals or clinics by Excel | 1.5h | 2014-06-11 13:30 | 2014-06-11 15:00 | 54 | 2.25d |  |
| 56 |  | Review web user interface | 2h | 2014-06-11 08:00 | 2014-06-11 10:00 | 37 | 43.75d | start no earlier than 2014-06-11 08:00 |
| 57 |  | Create appointments online | 1.5h | 2014-06-11 08:00 | 2014-06-11 09:30 | 37 | 2.25d | start no earlier than 2014-06-11 08:00 |
| 58 |  | View list of appointments | 1.5h | 2014-06-11 09:30 | 2014-06-11 11:00 | 57 | 2.25d |  |
| 59 |  | View administrator statistics | 1.5h | 2014-06-11 11:00 | 2014-06-11 13:30 | 58 | 2.25d |  |
| 60 |  | View hospital statistics | 1.5h | 2014-06-11 13:30 | 2014-06-11 15:00 | 59 | 2.25d |  |
| 61 |  | Review and update use case | 1d | 2014-06-12 08:00 | 2014-06-12 17:00 | 42, 49, 54, 59 | 37.5d | start no earlier than 2014-06-12 08:00 |
| 62 |  | Create report 4 | 1d | 2014-06-13 08:00 | 2014-06-13 17:00 | 61 | 37.5d | start no earlier than 2014-06-13 08:00 |
| 63 | 4 | **Implementation** | 41d | 2014-06-16 08:00 | 2014-08-11 17:00 |  |  |  |
| 64 |  | Review web user interface | 1d | 2014-06-16 08:00 | 2014-06-16 17:00 |  | 28.5d |  |
| 65 |  | Review web user interface | 2h | 2014-06-17 08:00 | 2014-06-17 10:00 | 64 | 28.5d |  |
| 66 |  | Login | 2h | 2014-06-17 10:00 | 2014-06-17 12:00 | 65 | 28.5d | start no earlier than 2014-06-17 08:00 |
| 67 |  | Change password | 2h | 2014-06-17 13:00 | 2014-06-17 15:00 | 66 | 28.5d |  |
| 68 |  | Reclaim forgot password | 2h | 2014-06-17 15:00 | 2014-06-17 17:00 | 67 | 28.5d |  |
| 69 |  | Review web user interface | 2h | 2014-06-17 08:00 | 2014-06-17 10:00 | 88 | 36d |  |
| 70 |  | Create hospital users' account | 2h | 2014-06-17 10:00 | 2014-06-17 12:00 | 69 | 29d | start no earlier than 2014-06-17 08:00 |

| ID | WBS | Task | Duration | Start | Finish | Predecessors | Total float | Constraint |
| --- | --- | --- | --- | --- | --- | --- | --- | --- |
| 71 |  | Update hospital users's account | 2h | 2014-06-17 13:00 | 2014-06-17 15:00 | 70 | 29d |  |
| 72 |  | Deactivate normal or hospital users' accounts | 2h | 2014-06-17 15:00 | 2014-06-17 17:00 | 71 | 29d |  |
| 73 |  | Review web user interface | 4h | 2014-06-17 08:00 | 2014-06-17 12:00 | 89 | 39.5d |  |
| 74 |  | View list of users or hospital users | 2h | 2014-06-17 08:00 | 2014-06-17 10:00 | 62 | 29.5d | start no earlier than 2014-06-17 08:00 |
| 75 |  | View hospitals or clinics information | 2h | 2014-06-17 10:00 | 2014-06-17 12:00 | 74 | 29.5d | start no earlier than 2014-06-06 08:00 |
| 76 |  | Review web user interface | 4h | 2014-06-17 08:00 | 2014-06-17 12:00 | 64 | 39.5d |  |
| 77 |  | Update hospitals or clinics information | 2h | 2014-06-17 08:00 | 2014-06-17 10:00 | 62 | 36.5d | start no earlier than 2014-06-17 08:00 |
| 78 |  | Rating | 2h | 2014-06-17 10:00 | 2014-06-17 12:00 | 77 | 29.5d | start no earlier than 2014-06-06 08:00 |
| 79 |  | Review web user interface | 4h | 2014-06-18 08:00 | 2014-06-18 12:00 | 72 | 38d | start no earlier than 2014-06-18 08:00 |
| 80 |  | Comment | 2h | 2014-06-18 13:00 | 2014-06-18 15:00 | 79 | 38d | start no earlier than 2014-06-06 08:00 |
| 81 |  | Reply comment | 2h | 2014-06-18 15:00 | 2014-06-18 17:00 | 80 | 38d | start no earlier than 2014-06-06 08:00 |
| 82 |  | Review web user interface | 4h | 2014-06-18 08:00 | 2014-06-18 12:00 | 68 | 28.25d |  |
| 83 |  | Create feedback | 2h | 2014-06-18 13:00 | 2014-06-18 15:00 | 82 | 28.25d | start no earlier than 2014-06-18 08:00 |
| 84 |  | View list of feedbacks | 2h | 2014-06-18 15:00 | 2014-06-18 17:00 | 83 | 38d | start no earlier than 2014-06-06 08:00 |
| 85 |  | Review code | 3d | 2014-06-19 08:00 | 2014-06-23 17:00 | 83, 75, 78, 72 | 35d | start no earlier than 2014-06-19 08:00 |
| 86 |  | Search hospitals | 1d? | 2014-06-16 08:00 | 2014-06-16 17:00 |  | 40d |  |
| 87 |  | Import list of hospitals or clinics by Excel | 3.5d | 2014-06-16 08:00 | 2014-06-19 12:00 |  | 37.5d |  |
| 88 |  | Create appointments online | 1d? | 2014-06-16 08:00 | 2014-06-16 17:00 |  | 36d |  |
| 89 |  | View list of appointments | 1d? | 2014-06-16 08:00 | 2014-06-16 17:00 |  | 39.5d |  |
| 90 |  | View administrator statistics | 1d? | 2014-06-16 08:00 | 2014-06-16 17:00 |  | 40d |  |
| 91 |  | View hospital statistics | 1d? | 2014-06-16 08:00 | 2014-06-16 17:00 |  | 40d |  |
| 92 | 5 | **Testing** | 1d? | 2014-05-27 08:00 | 2014-05-27 17:00 |  |  |  |
| 93 | 5.1 | **Unit test** | 1d? | 2014-05-27 08:00 | 2014-05-27 17:00 |  | 0d |  |
| 94 |  | Login | 1d? | 2014-05-27 08:00 | 2014-05-27 17:00 |  | 0d |  |
| 95 |  | Change password | 1d? | 2014-05-27 08:00 | 2014-05-27 17:00 |  | 0d |  |
| 96 |  | Reclaim forgot password | 1d? | 2014-05-27 08:00 | 2014-05-27 17:00 |  | 0d |  |
| 97 |  | Create hospital users' account | 1d? | 2014-05-27 08:00 | 2014-05-27 17:00 |  | 0d |  |
| 98 |  | Update hospital users's account | 1d? | 2014-05-27 08:00 | 2014-05-27 17:00 |  | 0d |  |
| 99 |  | Deactivate normal or hospital users' accounts | 1d? | 2014-05-27 08:00 | 2014-05-27 17:00 |  | 0d |  |
| 100 |  | View list of users or hospital users | 1d? | 2014-05-27 08:00 | 2014-05-27 17:00 |  | 0d |  |
| 101 |  | View hospitals or clinics information | 1d? | 2014-05-27 08:00 | 2014-05-27 17:00 |  | 0d |  |
| 102 |  | Update hospitals or clinics information | 1d? | 2014-05-27 08:00 | 2014-05-27 17:00 |  | 0d |  |
| 103 |  | Comment | 1d? | 2014-05-27 08:00 | 2014-05-27 17:00 |  | 0d |  |
| 104 |  | Reply comment | 1d? | 2014-05-27 08:00 | 2014-05-27 17:00 |  | 0d |  |
| 105 |  | Rating | 1d? | 2014-05-27 08:00 | 2014-05-27 17:00 |  | 0d |  |
| 106 |  | Create feedback | 1d? | 2014-05-27 08:00 | 2014-05-27 17:00 |  | 0d |  |
| 107 |  | View list of feedbacks | 1d? | 2014-05-27 08:00 | 2014-05-27 17:00 |  | 0d |  |
| 108 |  | Import list of hospitals or clinics by Excel | 1d? | 2014-05-27 08:00 | 2014-05-27 17:00 |  | 0d |  |
| 109 |  | Create appointments online | 1d? | 2014-05-27 08:00 | 2014-05-27 17:00 |  | 0d |  |
| 110 |  | View list of appointments | 1d? | 2014-05-27 08:00 | 2014-05-27 17:00 |  | 0d |  |
| 111 |  | View administrator statistics | 1d? | 2014-05-27 08:00 | 2014-05-27 17:00 |  | 0d |  |
| 112 |  | View hospital statistics | 1d? | 2014-05-27 08:00 | 2014-05-27 17:00 |  | 0d |  |
| 113 |  | Create architecture diagram | 1d? | 2014-05-27 08:00 | 2014-05-27 17:00 |  | 0d |  |
| 114 |  | Integration test | 1d? | 2014-05-27 08:00 | 2014-05-27 17:00 |  | 0d |  |
| 115 |  | System test | 1d? | 2014-05-27 08:00 | 2014-05-27 17:00 |  | 0d |  |
| 116 |  | Create report 5 | 1d? | 2014-05-27 08:00 | 2014-05-27 17:00 |  | 0d |  |
| 117 | 6 | **Prepare for preparation** | 1d? | 2014-05-27 08:00 | 2014-05-27 17:00 |  |  |  |
| 118 |  | Create report 6 | 1d? | 2014-05-27 08:00 | 2014-05-27 17:00 |  | 0d |  |
| 119 |  | Integrate reports | 1d? | 2014-05-27 08:00 | 2014-05-27 17:00 |  | 0d |  |
| 120 |  | Dummy presentation | 1d? | 2014-05-27 08:00 | 2014-05-27 17:00 |  | 0d |  |

## Version 2 (saved 2014-06-09)

Note of the change: [vietlp] Update[vietlp] Update tasksheet for week 5 and 6.

Last finish stays 2014-08-11.

Added:

| ID | Task | Duration | Start | Finish | Resources |
| --- | --- | --- | --- | --- | --- |
| 64 | Review sequence diagram | 1d | 2014-06-16 08:00 | 2014-06-16 17:00 | Dương Thị Hoàng Anh; Lê Phước Việt; Nguyễn Xuân Sơn; Vũ Nhật Anh Khoa |

Changed:

| ID | Task | Start | Finish | Duration | Total float | Predecessors |
| --- | --- | --- | --- | --- | --- | --- |
| 65 | Review web user interface | 2014-06-16 08:00 → 2014-06-17 08:00 (+1d) | 2014-06-16 17:00 → 2014-06-17 17:00 (+1d) |  | 28.5d → 34d | none → 64 |
| 66 | Review web user interface | 2014-06-17 08:00 → 2014-06-18 08:00 (+1d) | 2014-06-17 10:00 → 2014-06-18 10:00 (+1d) |  | 28.5d → 34d |  |
| 67 | Login | 2014-06-17 10:00 → 2014-06-18 10:00 (+1d) | 2014-06-17 12:00 → 2014-06-18 12:00 (+1d) |  | 28.5d → 34d |  |
| 68 | Change password | 2014-06-17 13:00 → 2014-06-18 13:00 (+1d) | 2014-06-17 15:00 → 2014-06-18 15:00 (+1d) |  | 28.5d → 34d |  |
| 69 | Reclaim forgot password | 2014-06-17 15:00 → 2014-06-18 15:00 (+1d) | 2014-06-17 17:00 → 2014-06-18 17:00 (+1d) |  | 28.5d → 34d |  |
| 70 | Review web user interface | 2014-06-17 08:00 → 2014-06-18 08:00 (+1d) | 2014-06-17 10:00 → 2014-06-18 10:00 (+1d) |  | 36d → 35d | 89 → 65 |
| 71 | Create hospital users' account | 2014-06-17 10:00 → 2014-06-18 10:00 (+1d) | 2014-06-17 12:00 → 2014-06-18 12:00 (+1d) |  | 29d → 35d |  |
| 72 | Update hospital users's account | 2014-06-17 13:00 → 2014-06-18 13:00 (+1d) | 2014-06-17 15:00 → 2014-06-18 15:00 (+1d) |  | 29d → 35d |  |
| 73 | Deactivate normal or hospital users' accounts | 2014-06-17 15:00 → 2014-06-18 15:00 (+1d) | 2014-06-17 17:00 → 2014-06-18 17:00 (+1d) |  | 29d → 35d |  |
| 74 | Review web user interface | 2014-06-17 08:00 → 2014-06-18 08:00 (+1d) | 2014-06-17 12:00 → 2014-06-18 12:00 (+1d) |  | 39.5d → 35d | 90 → 65 |
| 75 | View list of users or hospital users | 2014-06-17 08:00 → 2014-06-18 13:00 (+1d) | 2014-06-17 10:00 → 2014-06-18 15:00 (+1d) |  | 29.5d → 35d | 62 → 74 |
| 76 | View hospitals or clinics information | 2014-06-17 10:00 → 2014-06-18 15:00 (+1d) | 2014-06-17 12:00 → 2014-06-18 17:00 (+1d) |  | 29.5d → 35d |  |
| 77 | Review web user interface | 2014-06-17 08:00 → 2014-06-18 08:00 (+1d) | 2014-06-17 12:00 → 2014-06-18 12:00 (+1d) |  | 39.5d → 35d |  |
| 78 | Update hospitals or clinics information | 2014-06-17 08:00 → 2014-06-18 13:00 (+1d) | 2014-06-17 10:00 → 2014-06-18 15:00 (+1d) |  | 36.5d → 35d | 62 → 77 |
| 79 | Rating | 2014-06-17 10:00 → 2014-06-18 15:00 (+1d) | 2014-06-17 12:00 → 2014-06-18 17:00 (+1d) |  | 29.5d → 35d |  |
| 80 | Review web user interface | 2014-06-18 08:00 → 2014-06-19 08:00 (+1d) | 2014-06-18 12:00 → 2014-06-19 12:00 (+1d) |  | 38d → 37d |  |
| 81 | Comment | 2014-06-18 13:00 → 2014-06-19 13:00 (+1d) | 2014-06-18 15:00 → 2014-06-19 15:00 (+1d) |  | 38d → 37d |  |
| 82 | Reply comment | 2014-06-18 15:00 → 2014-06-19 15:00 (+1d) | 2014-06-18 17:00 → 2014-06-19 17:00 (+1d) |  | 38d → 37d |  |
| 83 | Review web user interface | 2014-06-18 08:00 → 2014-06-19 08:00 (+1d) | 2014-06-18 12:00 → 2014-06-19 12:00 (+1d) |  | 28.25d → 34d |  |
| 84 | Create feedback | 2014-06-18 13:00 → 2014-06-19 13:00 (+1d) | 2014-06-18 15:00 → 2014-06-19 15:00 (+1d) |  | 28.25d → 34d |  |
| 85 | View list of feedbacks | 2014-06-18 15:00 → 2014-06-19 15:00 (+1d) | 2014-06-18 17:00 → 2014-06-19 17:00 (+1d) |  | 38d → 34d |  |
| 86 | Review code | 2014-06-19 08:00 → 2014-06-20 08:00 (+1d) | 2014-06-23 17:00 → 2014-06-24 17:00 (+1d) |  | 35d → 34d | 84, 76, 79, 73 → 76, 79, 73, 85 |
| 88 | Import list of hospitals or clinics by Excel |  | 2014-06-19 12:00 → 2014-06-16 17:00 (-3d) | 3.5d → 1d? | 37.5d → 40d |  |
