# Hospital Finder Project

How a schedule from MS Project changed from version to version. A marks actual dates.

## Version 1 (saved 2014-05-29)

Note of the change: Modify microsoft project plan

| ID | WBS | Task | Duration | Start | Finish | Predecessors | Total float | Constraint |
| --- | --- | --- | --- | --- | --- | --- | --- | --- |
| 1 | 1 | **Analyze business and investigate technology** | 6d | 2014-05-19 08:00 | 2014-05-26 17:00 |  |  |  |
| 2 |  | Determine project scope | 1d | 2014-05-19 08:00 | 2014-05-19 17:00 |  | 0d |  |
| 3 |  | Create general use case diagram | 1d | 2014-05-20 08:00 | 2014-05-20 17:00 | 2 | 0d |  |
| 4 |  | Create report 2 | 1d | 2014-05-20 08:00 | 2014-05-20 17:00 | 2 | 4d |  |
| 5 |  | Research responsive web layout | 1d | 2014-05-20 08:00 | 2014-05-20 17:00 | 2 | 4d |  |
| 6 |  | Create ERD | 2d | 2014-05-21 08:00 | 2014-05-22 17:00 | 3 | 0d |  |
| 7 |  | Research Google API | 2d | 2014-05-21 08:00 | 2014-05-22 17:00 | 3 | 2d |  |
| 8 |  | Research Facebook API | 2d | 2014-05-21 08:00 | 2014-05-22 17:00 | 3 | 2d |  |
| 9 |  | Research search and word break down algorithm | 2d | 2014-05-23 08:00 | 2014-05-26 17:00 | 6 | 0d |  |
| 10 | 2 | **Use case specification** | 4d | 2014-05-27 08:00 | 2014-05-30 17:00 |  |  |  |
| 11 |  | Login | 2.5h | 2014-05-27 08:00 | 2014-05-27 10:30 | 7 | 3.69d |  |
| 12 |  | Change password | 2.5h | 2014-05-27 08:00 | 2014-05-27 10:30 | 7 | 3.69d |  |
| 13 |  | Reclaim forgot password | 2.5h | 2014-05-27 08:00 | 2014-05-27 10:30 | 7 | 3.69d |  |
| 14 |  | Create hospital users' account | 4h | 2014-05-27 13:00 | 2014-05-27 17:00 | 7 | 46d | finish no earlier than 2014-05-27 17:00 |
| 15 |  | Update hospital users's account | 4h | 2014-05-27 08:00 | 2014-05-27 12:00 | 7 | 47d | start no earlier than 2014-05-27 08:00 |
| 16 |  | Deactivate normal or hospital users' accounts | 2.5h | 2014-05-27 08:00 | 2014-05-27 10:30 | 7 | 3.69d |  |
| 17 |  | View list of users or hospital users | 2.5h | 2014-05-27 08:00 | 2014-05-27 10:30 | 7 | 3.69d |  |
| 18 |  | View hospitals or clinics information | 2.5h | 2014-05-27 08:00 | 2014-05-27 10:30 | 7 | 3.69d |  |
| 19 |  | Update hospitals or clinics information | 2.5h | 2014-05-27 08:00 | 2014-05-27 10:30 | 7 | 3.69d |  |
| 20 |  | Comment | 2.5h | 2014-05-27 08:00 | 2014-05-27 10:30 | 7 | 3.69d |  |
| 21 |  | Reply comment | 2.5h | 2014-05-27 08:00 | 2014-05-27 10:30 | 7 | 3.69d |  |
| 22 |  | Rating | 2.5h | 2014-05-28 08:00 | 2014-05-28 10:30 | 8 | 46.69d | start no earlier than 2014-05-28 08:00 |
| 23 |  | Create feedback | 2.5h | 2014-05-28 08:00 | 2014-05-28 10:30 | 8 | 46.69d | start no earlier than 2014-05-28 08:00 |
| 24 |  | View list of feedbacks | 2.5h | 2014-05-28 08:00 | 2014-05-28 10:30 | 8 | 46.69d | start no earlier than 2014-05-28 08:00 |
| 25 |  | Import list of hospitals or clinics by Excel | 2.5h | 2014-05-28 08:00 | 2014-05-28 10:30 | 8 | 46.69d | start no earlier than 2014-05-28 08:00 |
| 26 |  | Create appointments online | 2.5h | 2014-05-28 08:00 | 2014-05-28 10:30 | 8 | 46.69d | start no earlier than 2014-05-28 08:00 |
| 27 |  | View list of appointments | 2.5h | 2014-05-28 08:00 | 2014-05-28 10:30 | 8 | 46.69d | start no earlier than 2014-05-28 08:00 |
| 28 |  | View administrator statistics | 2.5h | 2014-05-28 08:00 | 2014-05-28 10:30 | 8 | 46.69d | start no earlier than 2014-05-28 08:00 |
| 29 |  | View hospital statistics | 2.5h | 2014-05-28 08:00 | 2014-05-28 10:30 | 8 | 46.69d | start no earlier than 2014-05-28 08:00 |
| 30 |  | Create class diagram | 1d | 2014-05-28 08:00 | 2014-05-28 17:00 | 8 | 46d | start no earlier than 2014-05-28 08:00 |
| 31 |  | Review and update use case | 1d | 2014-05-29 08:00 | 2014-05-29 17:00 | 9 | 45d | start no earlier than 2014-05-29 08:00 |
| 32 |  | Create architecture diagram | 1d | 2014-05-30 08:00 | 2014-05-30 17:00 | 11 | 44d | start no earlier than 2014-05-30 08:00 |
| 33 |  | Create report 3 | 1d | 2014-05-30 08:00 | 2014-05-30 17:00 | 11 | 44d | start no earlier than 2014-05-30 08:00 |
| 34 |  | Create website layout | 1d | 2014-05-30 08:00 | 2014-05-30 17:00 | 11 | 44d | start no earlier than 2014-05-30 08:00 |
| 35 | 3 | **Sequence diagrams specification** | 4d | 2014-06-02 08:00 | 2014-06-05 17:00 |  |  |  |
| 36 |  | Login | 1.6h | 2014-06-02 08:00 | 2014-06-02 09:36 | 12 | 3.8d |  |
| 37 |  | Change password | 1.6h | 2014-06-02 08:00 | 2014-06-02 09:36 | 12 | 3.8d |  |
| 38 |  | Reclaim forgot password | 1.6h | 2014-06-02 08:00 | 2014-06-02 09:36 | 12 | 3.8d |  |
| 39 |  | Create hospital users' account | 1.6h | 2014-06-02 08:00 | 2014-06-02 09:36 | 12 | 3.8d |  |
| 40 |  | Update hospital users's account | 1.6h | 2014-06-02 08:00 | 2014-06-02 09:36 | 12 | 3.8d |  |
| 41 |  | Deactivate normal or hospital users' accounts | 1.3h | 2014-06-02 08:00 | 2014-06-02 09:18 | 12 | 3.84d |  |
| 42 |  | View list of users or hospital users | 1.3h | 2014-06-02 08:00 | 2014-06-02 09:18 | 12 | 3.84d |  |
| 43 |  | View hospitals or clinics information | 1.3h | 2014-06-02 08:00 | 2014-06-02 09:18 | 12 | 3.84d |  |
| 44 |  | Update hospitals or clinics information | 1.3h | 2014-06-02 08:00 | 2014-06-02 09:18 | 12 | 3.84d |  |
| 45 |  | Comment | 1.3h | 2014-06-02 08:00 | 2014-06-02 09:18 | 12 | 3.84d |  |
| 46 |  | Reply comment | 1.3h | 2014-06-02 08:00 | 2014-06-02 09:18 | 12 | 3.84d |  |
| 47 |  | Rating | 2h | 2014-06-02 08:00 | 2014-06-02 10:00 | 12 | 3.75d |  |
| 48 |  | Create feedback | 2h | 2014-06-02 08:00 | 2014-06-02 10:00 | 12 | 3.75d |  |
| 49 |  | View list of feedbacks | 2h | 2014-06-02 08:00 | 2014-06-02 10:00 | 12 | 3.75d |  |
| 50 |  | Import list of hospitals or clinics by Excel | 2h | 2014-06-02 08:00 | 2014-06-02 10:00 | 12 | 3.75d |  |
| 51 |  | Create appointments online | 2h | 2014-06-02 08:00 | 2014-06-02 10:00 | 12 | 3.75d |  |
| 52 |  | View list of appointments | 2h | 2014-06-02 08:00 | 2014-06-02 10:00 | 12 | 3.75d |  |
| 53 |  | View administrator statistics | 2h | 2014-06-02 08:00 | 2014-06-02 10:00 | 12 | 3.75d |  |
| 54 |  | View hospital statistics | 2h | 2014-06-02 08:00 | 2014-06-02 10:00 | 12 | 3.75d |  |
| 55 |  | Review and update use case | 2d | 2014-06-03 08:00 | 2014-06-04 17:00 | 13 | 41d | start no earlier than 2014-06-03 08:00 |
| 56 |  | Create report 4 | 1d | 2014-06-05 08:00 | 2014-06-05 17:00 | 14 | 40d | start no earlier than 2014-06-05 08:00 |
| 57 | 4 | **Implementation** | 41d | 2014-06-05 08:00 | 2014-07-31 17:00 |  |  |  |
| 58 |  | Login | 2.5h | 2014-06-05 08:00 | 2014-06-05 10:30 | 14 | 40.69d |  |
| 59 |  | Change password | 2.5h | 2014-06-05 08:00 | 2014-06-05 10:30 | 14 | 40.69d |  |
| 60 |  | Reclaim forgot password | 2.5h | 2014-06-05 08:00 | 2014-06-05 10:30 | 14 | 40.69d |  |
| 61 |  | Create hospital users' account | 4h | 2014-06-05 08:00 | 2014-06-05 12:00 | 14 | 40.5d |  |
| 62 |  | Update hospital users's account | 2h | 2014-06-05 08:00 | 2014-06-05 10:00 | 14 | 40.75d |  |
| 63 |  | Deactivate normal or hospital users' accounts | 2h | 2014-06-05 08:00 | 2014-06-05 10:00 | 14 | 40.75d |  |
| 64 |  | View list of users or hospital users | 4h | 2014-06-06 08:00 | 2014-06-06 12:00 | 15 | 39.5d | start no earlier than 2014-06-06 08:00 |
| 65 |  | View hospitals or clinics information | 4h | 2014-06-06 08:00 | 2014-06-06 12:00 | 15 | 39.5d | start no earlier than 2014-06-06 08:00 |
| 66 |  | Update hospitals or clinics information | 4h | 2014-06-06 08:00 | 2014-06-06 12:00 | 15 | 39.5d | start no earlier than 2014-06-06 08:00 |
| 67 |  | Rating | 4h | 2014-06-06 08:00 | 2014-06-06 12:00 | 15 | 39.5d | start no earlier than 2014-06-06 08:00 |
| 68 |  | Comment | 4h | 2014-06-06 08:00 | 2014-06-06 12:00 | 15 | 39.5d | start no earlier than 2014-06-06 08:00 |
| 69 |  | Reply comment | 4h | 2014-06-06 08:00 | 2014-06-06 12:00 | 15 | 39.5d | start no earlier than 2014-06-06 08:00 |
| 70 |  | Create feedback | 4h | 2014-06-06 08:00 | 2014-06-06 12:00 | 15 | 39.5d | start no earlier than 2014-06-06 08:00 |

| ID | WBS | Task | Duration | Start | Finish | Predecessors | Total float | Constraint |
| --- | --- | --- | --- | --- | --- | --- | --- | --- |
| 71 |  | View list of feedbacks | 4h | 2014-06-06 08:00 | 2014-06-06 12:00 | 15 | 39.5d | start no earlier than 2014-06-06 08:00 |
| 72 |  | Review code | 3d | 2014-06-09 08:00 | 2014-06-11 17:00 | 16 | 36d | start no earlier than 2014-06-09 08:00 |
| 73 |  | Search hospitals | 7d | 2014-06-12 08:00 | 2014-06-20 17:00 | 17 | 29d | start no earlier than 2014-06-12 08:00 |
| 74 |  | Import list of hospitals or clinics by Excel | 3.5d | 2014-06-12 08:00 | 2014-06-17 12:00 | 17 | 32.5d | start no earlier than 2014-06-12 08:00 |
| 75 |  | Create appointments online | 1d? | 2014-06-05 08:00 | 2014-06-05 17:00 |  | 40d |  |
| 76 |  | View list of appointments | 1d? | 2014-06-05 08:00 | 2014-06-05 17:00 |  | 40d |  |
| 77 |  | View administrator statistics | 1d? | 2014-06-05 08:00 | 2014-06-05 17:00 |  | 40d |  |
| 78 |  | View hospital statistics | 1d? | 2014-06-05 08:00 | 2014-06-05 17:00 |  | 40d |  |
| 79 | 5 | **Testing** | 1d? | 2014-05-27 08:00 | 2014-05-27 17:00 |  |  |  |
| 80 | 5.1 | **Unit test** | 1d? | 2014-05-27 08:00 | 2014-05-27 17:00 |  | 0d |  |
| 81 |  | Login | 1d? | 2014-05-27 08:00 | 2014-05-27 17:00 |  | 0d |  |
| 82 |  | Change password | 1d? | 2014-05-27 08:00 | 2014-05-27 17:00 |  | 0d |  |
| 83 |  | Reclaim forgot password | 1d? | 2014-05-27 08:00 | 2014-05-27 17:00 |  | 0d |  |
| 84 |  | Create hospital users' account | 1d? | 2014-05-27 08:00 | 2014-05-27 17:00 |  | 0d |  |
| 85 |  | Update hospital users's account | 1d? | 2014-05-27 08:00 | 2014-05-27 17:00 |  | 0d |  |
| 86 |  | Deactivate normal or hospital users' accounts | 1d? | 2014-05-27 08:00 | 2014-05-27 17:00 |  | 0d |  |
| 87 |  | View list of users or hospital users | 1d? | 2014-05-27 08:00 | 2014-05-27 17:00 |  | 0d |  |
| 88 |  | View hospitals or clinics information | 1d? | 2014-05-27 08:00 | 2014-05-27 17:00 |  | 0d |  |
| 89 |  | Update hospitals or clinics information | 1d? | 2014-05-27 08:00 | 2014-05-27 17:00 |  | 0d |  |
| 90 |  | Comment | 1d? | 2014-05-27 08:00 | 2014-05-27 17:00 |  | 0d |  |
| 91 |  | Reply comment | 1d? | 2014-05-27 08:00 | 2014-05-27 17:00 |  | 0d |  |
| 92 |  | Rating | 1d? | 2014-05-27 08:00 | 2014-05-27 17:00 |  | 0d |  |
| 93 |  | Create feedback | 1d? | 2014-05-27 08:00 | 2014-05-27 17:00 |  | 0d |  |
| 94 |  | View list of feedbacks | 1d? | 2014-05-27 08:00 | 2014-05-27 17:00 |  | 0d |  |
| 95 |  | Import list of hospitals or clinics by Excel | 1d? | 2014-05-27 08:00 | 2014-05-27 17:00 |  | 0d |  |
| 96 |  | Create appointments online | 1d? | 2014-05-27 08:00 | 2014-05-27 17:00 |  | 0d |  |
| 97 |  | View list of appointments | 1d? | 2014-05-27 08:00 | 2014-05-27 17:00 |  | 0d |  |
| 98 |  | View administrator statistics | 1d? | 2014-05-27 08:00 | 2014-05-27 17:00 |  | 0d |  |
| 99 |  | View hospital statistics | 1d? | 2014-05-27 08:00 | 2014-05-27 17:00 |  | 0d |  |
| 100 |  | Create architecture diagram | 1d? | 2014-05-27 08:00 | 2014-05-27 17:00 |  | 0d |  |
| 101 |  | Integration test | 1d? | 2014-05-27 08:00 | 2014-05-27 17:00 |  | 0d |  |
| 102 |  | System test | 1d? | 2014-05-27 08:00 | 2014-05-27 17:00 |  | 0d |  |
| 103 |  | Create report 5 | 1d? | 2014-05-27 08:00 | 2014-05-27 17:00 |  | 0d |  |
| 104 | 6 | **Prepare for preparation** | 1d? | 2014-05-27 08:00 | 2014-05-27 17:00 |  |  |  |
| 105 |  | Create report 6 | 1d? | 2014-05-27 08:00 | 2014-05-27 17:00 |  | 0d |  |
| 106 |  | Integrate reports | 1d? | 2014-05-27 08:00 | 2014-05-27 17:00 |  | 0d |  |
| 107 |  | Dummy presentation | 1d? | 2014-05-27 08:00 | 2014-05-27 17:00 |  | 0d |  |

## Version 2 (saved 2014-06-08)

Note of the change: [vietlp] Update tasksheet for week 5 and week 6.

Last finish 2014-07-31 → 2014-08-11 (+11d).

Added:

| ID | Task | Duration | Start | Finish | Predecessors | Resources |
| --- | --- | --- | --- | --- | --- | --- |
| 36 | Study User Control, javascript, css | 1d | 2014-06-09 08:00 | 2014-06-09 17:00 |  | Dương Thị Hoàng Anh; Lê Phước Việt; Nguyễn Xuân Sơn; Vũ Nhật Anh Khoa |
| 37 | Create web user interface | 1d | 2014-06-10 08:00 | 2014-06-10 17:00 | 36 | Lê Phước Việt; Nguyễn Xuân Sơn |
| 60 | Review web user interface | 1d | 2014-06-16 08:00 | 2014-06-16 17:00 |  | Dương Thị Hoàng Anh; Lê Phước Việt; Nguyễn Xuân Sơn; Vũ Nhật Anh Khoa |

Changed:

| ID | Task | Start | Finish | Duration | Total float | Predecessors | Other |
| --- | --- | --- | --- | --- | --- | --- | --- |
| 11 | Login |  |  |  | 3.69d → 3.06d | 7 → 9 |  |
| 12 | Change password | 2014-05-27 08:00 → 2014-05-27 10:30 | 2014-05-27 10:30 → 2014-05-27 14:00 |  | 3.69d → 3.06d | 7 → 11 |  |
| 13 | Reclaim forgot password | 2014-05-27 08:00 → 2014-05-27 14:00 | 2014-05-27 10:30 → 2014-05-27 16:30 |  | 3.69d → 3.06d | 7 → 12 |  |
| 14 | Create hospital users' account |  |  |  | 46d → 54d | 7 → 9 |  |
| 15 | Update hospital users's account |  |  |  | 47d → 9.56d | 7 → none |  |
| 16 | Deactivate normal or hospital users' accounts |  |  |  | 3.69d → 3.06d | 7 → 9 |  |
| 17 | View list of users or hospital users | 2014-05-27 08:00 → 2014-05-27 10:30 | 2014-05-27 10:30 → 2014-05-27 14:00 |  | 3.69d → 3.06d | 7 → 16 |  |
| 18 | View hospitals or clinics information | 2014-05-27 08:00 → 2014-05-27 14:00 | 2014-05-27 10:30 → 2014-05-27 16:30 |  | 3.69d → 3.06d | 7 → 17 |  |
| 19 | Update hospitals or clinics information |  |  |  | 3.69d → 3.06d | 7 → 9 |  |
| 20 | Comment | 2014-05-27 08:00 → 2014-05-27 10:30 | 2014-05-27 10:30 → 2014-05-27 14:00 |  | 3.69d → 3.06d | 7 → 19 |  |
| 21 | Reply comment | 2014-05-27 08:00 → 2014-05-27 14:00 | 2014-05-27 10:30 → 2014-05-27 16:30 |  | 3.69d → 3.06d | 7 → 20 |  |
| 22 | Rating |  |  |  | 46.69d → 9.06d | 8 → 15 |  |
| 23 | Create feedback | 2014-05-28 08:00 → 2014-05-28 10:30 | 2014-05-28 10:30 → 2014-05-28 14:00 |  | 46.69d → 9.06d | 8 → 22 |  |
| 24 | View list of feedbacks | 2014-05-28 08:00 → 2014-05-28 14:00 | 2014-05-28 10:30 → 2014-05-28 16:30 |  | 46.69d → 9.06d | 8 → 23 |  |
| 25 | Import list of hospitals or clinics by Excel |  |  |  | 46.69d → 9.38d | 8 → 13 |  |
| 26 | Create appointments online | 2014-05-28 08:00 → 2014-05-28 10:30 | 2014-05-28 10:30 → 2014-05-28 14:00 |  | 46.69d → 9.38d | 8 → 25 |  |
| 27 | View list of appointments |  |  |  | 46.69d → 53.06d | 8 → 18 |  |
| 28 | View administrator statistics | 2014-05-28 08:00 → 2014-05-28 10:30 | 2014-05-28 10:30 → 2014-05-28 14:00 |  | 46.69d → 53.06d | 8 → 27 |  |
| 29 | View hospital statistics | 2014-05-28 08:00 → 2014-05-28 14:00 | 2014-05-28 10:30 → 2014-05-28 16:30 |  | 46.69d → 53.06d | 8 → 28 |  |
| 30 | Create class diagram |  |  |  | 46d → 9d | 8 → 21 |  |
| 31 | Review and update use case |  |  |  | 45d → 9d | 9 → 26, 24, 30, 18 |  |
| 32 | Create architecture diagram |  |  |  | 44d → 51d | 11 → 31 |  |
| 33 | Create report 3 |  |  |  | 44d → 51d | 11 → 31 |  |
| 34 | Create website layout |  |  |  | 44d → 51d | 11 → 31 |  |
| 35 | **Sequence diagrams specification** | 2014-06-02 08:00 → 2014-06-09 08:00 (+7d) | 2014-06-05 17:00 → 2014-06-13 17:00 (+8d) | 4d → 5d |  |  |  |
| 38 | Login | 2014-06-02 08:00 → 2014-06-10 08:00 (+8d) | 2014-06-02 09:36 → 2014-06-10 09:30 (+8d) | 1.6h → 1.5h | 3.8d → 3.06d | 12 → none | constraint none → start no earlier than 2014-06-10 08:00 |
| 39 | Change password | 2014-06-02 08:00 → 2014-06-10 09:30 (+8d) | 2014-06-02 09:36 → 2014-06-10 11:00 (+8d) | 1.6h → 1.5h | 3.8d → 3.06d | 12 → 38 |  |
| 40 | Reclaim forgot password | 2014-06-02 08:00 → 2014-06-10 11:00 (+8d) | 2014-06-02 09:36 → 2014-06-10 13:30 (+8d) | 1.6h → 1.5h | 3.8d → 3.06d | 12 → 39 |  |
| 41 | Create hospital users' account | 2014-06-02 08:00 → 2014-06-10 13:30 (+8d) | 2014-06-02 09:36 → 2014-06-10 15:00 (+8d) | 1.6h → 1.5h | 3.8d → 3.06d | 12 → 40 |  |
| 42 | Update hospital users's account | 2014-06-02 08:00 → 2014-06-10 15:00 (+8d) | 2014-06-02 09:36 → 2014-06-10 16:30 (+8d) | 1.6h → 1.5h | 3.8d → 3.06d | 12 → 41 |  |
| 43 | Deactivate normal or hospital users' accounts | 2014-06-02 08:00 → 2014-06-10 08:00 (+8d) | 2014-06-02 09:18 → 2014-06-10 09:30 (+8d) | 1.3h → 1.5h | 3.84d → 3.12d | 12 → none | constraint none → start no earlier than 2014-06-10 08:00 |
| 44 | View list of users or hospital users | 2014-06-02 08:00 → 2014-06-10 09:30 (+8d) | 2014-06-02 09:18 → 2014-06-10 11:00 (+8d) | 1.3h → 1.5h | 3.84d → 3.12d | 12 → 43 |  |
| 45 | View hospitals or clinics information | 2014-06-02 08:00 → 2014-06-10 11:00 (+8d) | 2014-06-02 09:18 → 2014-06-10 13:30 (+8d) | 1.3h → 1.5h | 3.84d → 3.12d | 12 → 44 |  |
| 46 | Update hospitals or clinics information | 2014-06-02 08:00 → 2014-06-10 13:30 (+8d) | 2014-06-02 09:18 → 2014-06-10 15:00 (+8d) | 1.3h → 1.5h | 3.84d → 3.12d | 12 → 45 |  |
| 47 | Comment | 2014-06-02 08:00 → 2014-06-10 15:00 (+8d) | 2014-06-02 09:18 → 2014-06-10 16:00 (+8d) | 1.3h → 1h | 3.84d → 3.12d | 12 → 46 |  |
| 48 | Reply comment | 2014-06-02 08:00 → 2014-06-10 16:00 (+8d) | 2014-06-02 09:18 → 2014-06-10 17:00 (+8d) | 1.3h → 1h | 3.84d → 44d | 12 → 47 | constraint none → finish no earlier than 2014-06-02 17:00 |
| 49 | Rating | 2014-06-02 08:00 → 2014-06-11 08:00 (+9d) | 2014-06-02 10:00 → 2014-06-11 10:00 (+9d) |  | 3.75d → 2d | 12 → 37 | constraint none → start no earlier than 2014-06-11 08:00 |
| 50 | Create feedback | 2014-06-02 08:00 → 2014-06-11 10:00 (+9d) | 2014-06-02 10:00 → 2014-06-11 12:00 (+9d) |  | 3.75d → 2d | 12 → 49 |  |
| 51 | View list of feedbacks | 2014-06-02 08:00 → 2014-06-11 13:00 (+9d) | 2014-06-02 10:00 → 2014-06-11 15:00 (+9d) |  | 3.75d → 2d | 12 → 50 |  |
| 52 | Import list of hospitals or clinics by Excel | 2014-06-02 08:00 → 2014-06-11 15:00 (+9d) | 2014-06-02 10:00 → 2014-06-11 17:00 (+9d) |  | 3.75d → 2d | 12 → 51 |  |
| 53 | Create appointments online | 2014-06-02 08:00 → 2014-06-11 08:00 (+9d) | 2014-06-02 10:00 → 2014-06-11 10:00 (+9d) |  | 3.75d → 2d | 12 → 37 | constraint none → start no earlier than 2014-06-11 08:00 |
| 54 | View list of appointments | 2014-06-02 08:00 → 2014-06-11 10:00 (+9d) | 2014-06-02 10:00 → 2014-06-11 12:00 (+9d) |  | 3.75d → 2d | 12 → 53 |  |
| 55 | View administrator statistics | 2014-06-02 08:00 → 2014-06-11 13:00 (+9d) | 2014-06-02 10:00 → 2014-06-11 15:00 (+9d) |  | 3.75d → 2d | 12 → 54 |  |
| 56 | View hospital statistics | 2014-06-02 08:00 → 2014-06-11 15:00 (+9d) | 2014-06-02 10:00 → 2014-06-11 17:00 (+9d) |  | 3.75d → 2d | 12 → 55 |  |
| 57 | Review and update use case | 2014-06-03 08:00 → 2014-06-12 08:00 (+9d) | 2014-06-04 17:00 → 2014-06-12 17:00 (+8d) | 2d → 1d | 41d → 30d | 13 → 41, 47, 51, 55 | constraint start no earlier than 2014-06-03 08:00 → start no earlier than 2014-06-12 08:00 |
| 58 | Create report 4 | 2014-06-05 08:00 → 2014-06-13 08:00 (+8d) | 2014-06-05 17:00 → 2014-06-13 17:00 (+8d) |  | 40d → 30d | 14 → 57 | constraint start no earlier than 2014-06-05 08:00 → start no earlier than 2014-06-13 08:00 |
| 59 | **Implementation** | 2014-06-05 08:00 → 2014-06-16 08:00 (+11d) | 2014-07-31 17:00 → 2014-08-11 17:00 (+11d) |  |  |  |  |
| 61 | Login | 2014-06-05 08:00 → 2014-06-17 08:00 (+12d) | 2014-06-05 10:30 → 2014-06-17 10:30 (+12d) |  | 40.69d → 28.56d | 14 → none | constraint none → start no earlier than 2014-06-17 08:00 |
| 62 | Change password | 2014-06-05 08:00 → 2014-06-17 10:30 (+12d) | 2014-06-05 10:30 → 2014-06-17 14:00 (+12d) |  | 40.69d → 28.56d | 14 → 61 |  |
| 63 | Reclaim forgot password | 2014-06-05 08:00 → 2014-06-17 14:00 (+12d) | 2014-06-05 10:30 → 2014-06-17 16:30 (+12d) |  | 40.69d → 28.56d | 14 → 62 |  |
| 64 | Create hospital users' account | 2014-06-05 08:00 → 2014-06-17 08:00 (+12d) | 2014-06-05 12:00 → 2014-06-17 12:00 (+12d) |  | 40.5d → 29d | 14 → none | constraint none → start no earlier than 2014-06-17 08:00 |
| 65 | Update hospital users's account | 2014-06-05 08:00 → 2014-06-17 13:00 (+12d) | 2014-06-05 10:00 → 2014-06-17 15:00 (+12d) |  | 40.75d → 29d | 14 → 64 |  |
| 66 | Deactivate normal or hospital users' accounts | 2014-06-05 08:00 → 2014-06-17 15:00 (+12d) | 2014-06-05 10:00 → 2014-06-17 17:00 (+12d) |  | 40.75d → 29d | 14 → 65 |  |
| 67 | View list of users or hospital users | 2014-06-06 08:00 → 2014-06-17 08:00 (+11d) | 2014-06-06 12:00 → 2014-06-17 12:00 (+11d) |  | 39.5d → 29d | 15 → 58 | constraint start no earlier than 2014-06-06 08:00 → start no earlier than 2014-06-17 08:00 |
| 68 | View hospitals or clinics information | 2014-06-06 08:00 → 2014-06-17 13:00 (+11d) | 2014-06-06 12:00 → 2014-06-17 17:00 (+11d) |  | 39.5d → 29d | 15 → 67 |  |
| 69 | Update hospitals or clinics information | 2014-06-06 08:00 → 2014-06-17 08:00 (+11d) | 2014-06-06 12:00 → 2014-06-17 12:00 (+11d) |  | 39.5d → 29d | 15 → 58 | constraint start no earlier than 2014-06-06 08:00 → start no earlier than 2014-06-17 08:00 |
| 70 | Rating | 2014-06-06 08:00 → 2014-06-17 13:00 (+11d) | 2014-06-06 12:00 → 2014-06-17 17:00 (+11d) |  | 39.5d → 29d | 15 → 69 |  |
| 71 | Comment | 2014-06-06 08:00 → 2014-06-18 08:00 (+12d) | 2014-06-06 12:00 → 2014-06-18 12:00 (+12d) |  | 39.5d → 38d | 15 → 66 |  |
| 72 | Reply comment | 2014-06-06 08:00 → 2014-06-18 13:00 (+12d) | 2014-06-06 12:00 → 2014-06-18 17:00 (+12d) |  | 39.5d → 38d | 15 → 71 |  |
| 73 | Create feedback | 2014-06-06 08:00 → 2014-06-18 08:00 (+12d) | 2014-06-06 12:00 → 2014-06-18 12:00 (+12d) |  | 39.5d → 28.5d | 15 → 63 | constraint start no earlier than 2014-06-06 08:00 → start no earlier than 2014-06-18 08:00 |
| 74 | View list of feedbacks | 2014-06-06 08:00 → 2014-06-18 13:00 (+12d) | 2014-06-06 12:00 → 2014-06-18 17:00 (+12d) |  | 39.5d → 38d | 15 → 73 |  |
| 75 | Review code | 2014-06-09 08:00 → 2014-06-18 13:00 (+9d) | 2014-06-11 17:00 → 2014-06-23 12:00 (+12d) |  | 36d → 28.5d | 16 → 73, 68, 70, 66 |  |
| 76 | Search hospitals | 2014-06-12 08:00 → 2014-06-23 13:00 (+11d) | 2014-06-20 17:00 → 2014-07-02 12:00 (+12d) |  | 29d → 28.5d | 17 → 75 |  |
| 77 | Import list of hospitals or clinics by Excel | 2014-06-12 08:00 → 2014-06-23 13:00 (+11d) | 2014-06-17 12:00 → 2014-06-26 17:00 (+9d) |  | 32.5d → 32d | 17 → 75 |  |
| 78 | Create appointments online | 2014-06-05 08:00 → 2014-06-16 08:00 (+11d) | 2014-06-05 17:00 → 2014-06-16 17:00 (+11d) |  |  |  |  |
| 79 | View list of appointments | 2014-06-05 08:00 → 2014-06-16 08:00 (+11d) | 2014-06-05 17:00 → 2014-06-16 17:00 (+11d) |  |  |  |  |
| 80 | View administrator statistics | 2014-06-05 08:00 → 2014-06-16 08:00 (+11d) | 2014-06-05 17:00 → 2014-06-16 17:00 (+11d) |  |  |  |  |
| 81 | View hospital statistics | 2014-06-05 08:00 → 2014-06-16 08:00 (+11d) | 2014-06-05 17:00 → 2014-06-16 17:00 (+11d) |  |  |  |  |
